# Software Development

How a schedule from MS Project changed from version to version. A marks actual dates.

## Version 1 (saved 2013-01-24, file Software Development Plan.mpp)

Note of the change: Merge pull request #17 from maria-shahid-aspose/master

| ID | WBS | Task | Duration | Start | Finish | Predecessors | Total float |
| --- | --- | --- | --- | --- | --- | --- | --- |
| 1 | 1 | **Scope** | 3.5d | 2012-12-24 | 2012-12-27 |  | 0d |
| 2 |  | Determine project scope | 4h | 2012-12-24 | 2012-12-24 |  | 0d |
| 3 |  | Secure project sponsorship | 1d | 2012-12-24 | 2012-12-25 | 2 | 0d |
| 4 |  | Define preliminary resources | 1d | 2012-12-25 | 2012-12-26 | 3 | 0d |
| 5 |  | Secure core resources | 1d | 2012-12-26 | 2012-12-27 | 4 | 0d |
| 6 |  | Scope complete | 0d | 2012-12-27 | 2012-12-27 | 5 | 0d |
| 7 | 2 | **Analysis/Software Requirements** | 14d | 2012-12-27 | 2013-01-16 |  | 0d |
| 8 |  | Conduct needs analysis | 5d | 2012-12-27 | 2013-01-03 | 6 | 0d |
| 9 |  | Draft preliminary software specifications | 3d | 2013-01-03 | 2013-01-08 | 8 | 0d |
| 10 |  | Develop preliminary budget | 2d | 2013-01-08 | 2013-01-10 | 9 | 0d |
| 11 |  | Review software specifications/budget with team | 4h | 2013-01-10 | 2013-01-10 | 10 | 0d |
| 12 |  | Incorporate feedback on software specifications | 1d | 2013-01-11 | 2013-01-11 | 11 | 0d |
| 13 |  | Develop delivery timeline | 1d | 2013-01-14 | 2013-01-14 | 12 | 0d |
| 14 |  | Obtain approvals to proceed (concept, timeline, budget) | 4h | 2013-01-15 | 2013-01-15 | 13 | 0d |
| 15 |  | Secure required resources | 1d | 2013-01-15 | 2013-01-16 | 14 | 0d |
| 16 |  | Analysis complete | 0d | 2013-01-16 | 2013-01-16 | 15 | 0d |
| 17 | 3 | **Design** | 14.5d | 2013-01-16 | 2013-02-05 |  | 0d |
| 18 |  | Review preliminary software specifications | 2d | 2013-01-16 | 2013-01-18 | 16 | 0d |
| 19 |  | Develop functional specifications | 5d | 2013-01-18 | 2013-01-25 | 18 | 0d |
| 20 |  | Develop prototype based on functional specifications | 4d | 2013-01-25 | 2013-01-31 | 19 | 0d |
| 21 |  | Review functional specifications | 2d | 2013-01-31 | 2013-02-04 | 20 | 0d |
| 22 |  | Incorporate feedback into functional specifications | 1d | 2013-02-04 | 2013-02-05 | 21 | 0d |
| 23 |  | Obtain approval to proceed | 4h | 2013-02-05 | 2013-02-05 | 22 | 0d |
| 24 |  | Design complete | 0d | 2013-02-05 | 2013-02-05 | 23 | 0d |
| 25 | 4 | **Development** | 21.75d | 2013-02-06 | 2013-03-07 |  | 0d |
| 26 |  | Review functional specifications | 1d | 2013-02-06 | 2013-02-06 | 24 | 0d |
| 27 |  | Identify modular/tiered design parameters | 1d | 2013-02-07 | 2013-02-07 | 26 | 0d |
| 28 |  | Assign development staff | 1d | 2013-02-08 | 2013-02-08 | 27 | 0d |
| 29 |  | Develop code | 15d | 2013-02-11 | 2013-03-01 | 28 | 0d |
| 30 |  | Developer testing (primary debugging) | 15d | 2013-02-14 | 2013-03-07 | 29FS-7.5% | 0d |
| 31 |  | Development complete | 0d | 2013-03-07 | 2013-03-07 | 30 | 0d |
| 32 | 5 | **Testing** | 48.75d | 2013-02-06 | 2013-04-15 |  | 15d |
| 33 |  | Develop unit test plans using product specifications | 4d | 2013-02-06 | 2013-02-11 | 24 | 17.75d |
| 34 |  | Develop integration test plans using product specifications | 4d | 2013-02-06 | 2013-02-11 | 24 | 59.75d |
| 35 | 5.3 | **Unit Testing** | 15d | 2013-03-07 | 2013-03-28 |  | 0d |
| 36 |  | Review modular code | 5d | 2013-03-07 | 2013-03-14 | 33, 31 | 0d |
| 37 |  | Test component modules to product specifications | 2d | 2013-03-14 | 2013-03-18 | 31, 36 | 0d |
| 38 |  | Identify anomalies to product specifications | 3d | 2013-03-18 | 2013-03-21 | 37 | 0d |
| 39 |  | Modify code | 3d | 2013-03-21 | 2013-03-26 | 38 | 0d |
| 40 |  | Re-test modified code | 2d | 2013-03-26 | 2013-03-28 | 39 | 0d |
| 41 |  | Unit testing complete | 0d | 2013-03-28 | 2013-03-28 | 40 | 0d |
| 42 | 5.4 | **Integration Testing** | 12d | 2013-03-28 | 2013-04-15 |  | 0d |
| 43 |  | Test module integration | 5d | 2013-03-28 | 2013-04-04 | 41 | 0d |
| 44 |  | Identify anomalies to specifications | 2d | 2013-04-04 | 2013-04-08 | 43 | 0d |
| 45 |  | Modify code | 3d | 2013-04-08 | 2013-04-11 | 44 | 0d |
| 46 |  | Re-test modified code | 2d | 2013-04-11 | 2013-04-15 | 45 | 0d |
| 47 |  | Integration testing complete | 0d | 2013-04-15 | 2013-04-15 | 46 | 0d |
| 48 | 6 | **Training** | 45.75d | 2013-02-06 | 2013-04-10 |  | 3d |
| 49 |  | Develop training specifications for end users | 3d | 2013-02-06 | 2013-02-08 | 24 | 21.75d |
| 50 |  | Develop training specifications for helpdesk support staff | 3d | 2013-02-06 | 2013-02-08 | 24 | 21.75d |
| 51 |  | Identify training delivery methodology (computer based training, classroom, etc.) | 2d | 2013-02-06 | 2013-02-07 | 24 | 22.75d |
| 52 |  | Develop training materials | 3w | 2013-03-07 | 2013-03-28 | 49, 31, 50, 51 | 3d |
| 53 |  | Conduct training usability study | 4d | 2013-03-28 | 2013-04-03 | 52 | 3d |
| 54 |  | Finalize training materials | 3d | 2013-04-03 | 2013-04-08 | 53 | 3d |
| 55 |  | Develop training delivery mechanism | 2d | 2013-04-08 | 2013-04-10 | 54 | 3d |
| 56 |  | Training materials complete | 0d | 2013-04-10 | 2013-04-10 | 55 | 3d |
| 57 | 7 | **Documentation** | 30.5d | 2013-02-06 | 2013-03-20 |  | 18.25d |
| 58 |  | Develop Help specification | 1d | 2013-02-06 | 2013-02-06 | 24 | 27.75d |
| 59 |  | Develop Help system | 3w | 2013-02-20 | 2013-03-13 | 58, 29FS-5% | 18.25d |
| 60 |  | Review Help documentation | 3d | 2013-03-13 | 2013-03-18 | 59 | 18.25d |
| 61 |  | Incorporate Help documentation feedback | 2d | 2013-03-18 | 2013-03-20 | 60 | 18.25d |
| 62 |  | Develop user manuals specifications | 2d | 2013-02-06 | 2013-02-07 | 24 | 27.75d |
| 63 |  | Develop user manuals | 3w | 2013-02-20 | 2013-03-13 | 62, 29FS-5% | 19.25d |
| 64 |  | Review all user documentation | 2d | 2013-03-13 | 2013-03-15 | 63 | 19.25d |
| 65 |  | Incorporate user documentation feedback | 2d | 2013-03-15 | 2013-03-19 | 64 | 19.25d |
| 66 |  | Documentation complete | 0d | 2013-03-20 | 2013-03-20 | 65, 61 | 18.25d |
| 67 | 8 | **Pilot** | 70.25d | 2013-01-16 | 2013-04-24 |  | 0d |
| 68 |  | Identify test group | 1d | 2013-01-16 | 2013-01-17 | 16 | 61.25d |
| 69 |  | Develop software delivery mechanism | 1d | 2013-01-17 | 2013-01-18 | 68 | 61.25d |
| 70 |  | Install/deploy software | 1d | 2013-04-15 | 2013-04-16 | 47, 69, 66, 56 | 0d |

| ID | WBS | Task | Duration | Start | Finish | Predecessors | Total float |
| --- | --- | --- | --- | --- | --- | --- | --- |
| 71 |  | Obtain user feedback | 1w | 2013-04-16 | 2013-04-23 | 70 | 0d |
| 72 |  | Evaluate testing information | 1d | 2013-04-23 | 2013-04-24 | 71 | 0d |
| 73 |  | Pilot complete | 0d | 2013-04-24 | 2013-04-24 | 72 | 0d |
| 74 | 9 | **Deployment** | 5d | 2013-04-24 | 2013-05-01 |  | 0d |
| 75 |  | Determine final deployment strategy | 1d | 2013-04-24 | 2013-04-25 | 73 | 0d |
| 76 |  | Develop deployment methodology | 1d | 2013-04-25 | 2013-04-26 | 75 | 0d |
| 77 |  | Secure deployment resources | 1d | 2013-04-26 | 2013-04-29 | 76 | 0d |
| 78 |  | Train support staff | 1d | 2013-04-29 | 2013-04-30 | 77 | 0d |
| 79 |  | Deploy software | 1d | 2013-04-30 | 2013-05-01 | 78 | 0d |
| 80 |  | Deployment complete | 0d | 2013-05-01 | 2013-05-01 | 79 | 0d |
| 81 | 10 | **Post Implementation Review** | 3d | 2013-05-01 | 2013-05-06 |  | 0d |
| 82 |  | Document lessons learned | 1d | 2013-05-01 | 2013-05-02 | 80 | 0d |
| 83 |  | Distribute to team members | 1d | 2013-05-02 | 2013-05-03 | 82 | 0d |
| 84 |  | Create software maintenance team | 1d | 2013-05-03 | 2013-05-06 | 83 | 0d |
| 85 |  | Post implementation review complete | 0d | 2013-05-06 | 2013-05-06 | 84 | 0d |
| 86 |  | Software development template complete | 0d | 2013-05-06 | 2013-05-06 | 85 | 0d |

## Version 2 (saved 2013-09-17, file Software Development.mpp)

Note of the change: Merge pull request #17 from maria-shahid-aspose/master

Last finish stays 2013-05-06.

Changed:

| ID | Task | Start | Complete | Total float | Other |
| --- | --- | --- | --- | --- | --- |
| 1 | **Scope** | 2012-12-24 A | 0% → 30% | 0d → 1.5d | baseline start none → 2012-12-24; baseline finish none → 2012-12-27 |
| 2 | Determine project scope | 2012-12-24 A | 0% → 30% | 0d → 0.3d | baseline start none → 2012-12-24; baseline finish none → 2012-12-24 |
| 3 | Secure project sponsorship | 2012-12-24 A | 0% → 30% | 0d → 0.3d | baseline start none → 2012-12-24; baseline finish none → 2012-12-25 |
| 4 | Define preliminary resources | 2012-12-25 A | 0% → 30% | 0d → 0.3d | baseline start none → 2012-12-25; baseline finish none → 2012-12-26 |
| 5 | Secure core resources | 2012-12-26 A | 0% → 30% | 0d → 1.5d | baseline start none → 2012-12-26; baseline finish none → 2012-12-27 |
| 6 | Scope complete | 2012-12-27 A | 0% → 30% | 0d → 1.5d | baseline start none → 2012-12-27; baseline finish none → 2012-12-27 |
| 7 | **Analysis/Software Requirements** | 2012-12-27 A | 0% → 30% | 0d → 0.3d | baseline start none → 2012-12-27; baseline finish none → 2013-01-16 |
| 8 | Conduct needs analysis | 2012-12-27 A | 0% → 30% | 0d → 0.9d | baseline start none → 2012-12-27; baseline finish none → 2013-01-03 |
| 9 | Draft preliminary software specifications | 2013-01-03 A | 0% → 30% | 0d → 0.6d | baseline start none → 2013-01-03; baseline finish none → 2013-01-08 |
| 10 | Develop preliminary budget | 2013-01-08 A | 0% → 30% | 0d → 0.15d | baseline start none → 2013-01-08; baseline finish none → 2013-01-10 |
| 11 | Review software specifications/budget with team | 2013-01-10 A | 0% → 30% | 0d → 0.3d | baseline start none → 2013-01-10; baseline finish none → 2013-01-10 |
| 12 | Incorporate feedback on software specifications | 2013-01-11 A | 0% → 30% | 0d → 0.3d | baseline start none → 2013-01-11; baseline finish none → 2013-01-11 |
| 13 | Develop delivery timeline | 2013-01-14 A | 0% → 30% | 0d → 0.15d | baseline start none → 2013-01-14; baseline finish none → 2013-01-14 |
| 14 | Obtain approvals to proceed (concept, timeline, budget) | 2013-01-15 A | 0% → 30% | 0d → 0.3d | baseline start none → 2013-01-15; baseline finish none → 2013-01-15 |
| 15 | Secure required resources | 2013-01-15 A | 0% → 30% | 0d → 0.3d | baseline start none → 2013-01-15; baseline finish none → 2013-01-16 |
| 16 | Analysis complete | 2013-01-16 A | 0% → 30% | 0d → 0.3d | baseline start none → 2013-01-16; baseline finish none → 2013-01-16 |
| 17 | **Design** | 2013-01-16 A | 0% → 30% | 0d → 0.3d | baseline start none → 2013-01-16; baseline finish none → 2013-02-05 |
| 18 | Review preliminary software specifications | 2013-01-16 A | 0% → 30% | 0d → 1.5d | baseline start none → 2013-01-16; baseline finish none → 2013-01-18 |
| 19 | Develop functional specifications | 2013-01-18 A | 0% → 30% | 0d → 1.2d | baseline start none → 2013-01-18; baseline finish none → 2013-01-25 |
| 20 | Develop prototype based on functional specifications | 2013-01-25 A | 0% → 30% | 0d → 0.6d | baseline start none → 2013-01-25; baseline finish none → 2013-01-31 |
| 21 | Review functional specifications | 2013-01-31 A | 0% → 30% | 0d → 0.3d | baseline start none → 2013-01-31; baseline finish none → 2013-02-04 |
| 22 | Incorporate feedback into functional specifications | 2013-02-04 A | 0% → 30% | 0d → 0.15d | baseline start none → 2013-02-04; baseline finish none → 2013-02-05 |
| 23 | Obtain approval to proceed | 2013-02-05 A | 0% → 30% | 0d → 0.3d | baseline start none → 2013-02-05; baseline finish none → 2013-02-05 |
| 24 | Design complete | 2013-02-05 A | 0% → 30% | 0d → 0.3d | baseline start none → 2013-02-05; baseline finish none → 2013-02-05 |
| 25 | **Development** | 2013-02-06 A | 0% → 30% | 0d → 1.5d | baseline start none → 2013-02-06; baseline finish none → 2013-03-07 |
| 26 | Review functional specifications | 2013-02-06 A | 0% → 30% | 0d → 0.3d | baseline start none → 2013-02-06; baseline finish none → 2013-02-06 |
| 27 | Identify modular/tiered design parameters | 2013-02-07 A | 0% → 30% | 0d → 0.3d | baseline start none → 2013-02-07; baseline finish none → 2013-02-07 |
| 28 | Assign development staff | 2013-02-08 A | 0% → 30% | 0d → 4.5d | baseline start none → 2013-02-08; baseline finish none → 2013-02-08 |
| 29 | Develop code | 2013-02-11 A | 0% → 30% | 0d → 4.5d | baseline start none → 2013-02-11; baseline finish none → 2013-03-01 |
| 30 | Developer testing (primary debugging) | 2013-02-14 A | 0% → 30% | 0d → 1.5d | baseline start none → 2013-02-14; baseline finish none → 2013-03-07 |
| 31 | Development complete | 2013-03-07 A | 0% → 30% | 0d → 1.5d | baseline start none → 2013-03-07; baseline finish none → 2013-03-07 |
| 32 | **Testing** | 2013-02-06 A | 0% → 30% |  | baseline start none → 2013-02-06; baseline finish none → 2013-04-15 |
| 33 | Develop unit test plans using product specifications | 2013-02-06 A | 0% → 30% | 17.75d → 19.25d | baseline start none → 2013-02-06; baseline finish none → 2013-02-11 |
| 34 | Develop integration test plans using product specifications | 2013-02-06 A | 0% → 30% |  | baseline start none → 2013-02-06; baseline finish none → 2013-02-11 |
| 35 | **Unit Testing** | 2013-03-07 A | 0% → 30% | 0d → 1.5d | baseline start none → 2013-03-07; baseline finish none → 2013-03-28 |
| 36 | Review modular code | 2013-03-07 A | 0% → 30% | 0d → 0.6d | baseline start none → 2013-03-07; baseline finish none → 2013-03-14 |
| 37 | Test component modules to product specifications | 2013-03-14 A | 0% → 30% | 0d → 0.9d | baseline start none → 2013-03-14; baseline finish none → 2013-03-18 |
| 38 | Identify anomalies to product specifications | 2013-03-18 A | 0% → 30% | 0d → 0.9d | baseline start none → 2013-03-18; baseline finish none → 2013-03-21 |
| 39 | Modify code | 2013-03-21 A | 0% → 30% | 0d → 0.6d | baseline start none → 2013-03-21; baseline finish none → 2013-03-26 |
| 40 | Re-test modified code | 2013-03-26 A | 0% → 30% | 0d → 1.5d | baseline start none → 2013-03-26; baseline finish none → 2013-03-28 |
| 41 | Unit testing complete | 2013-03-28 A | 0% → 30% | 0d → 1.5d | baseline start none → 2013-03-28; baseline finish none → 2013-03-28 |
| 42 | **Integration Testing** | 2013-03-28 A | 0% → 30% | 0d → 0.3d | baseline start none → 2013-03-28; baseline finish none → 2013-04-15 |
| 43 | Test module integration | 2013-03-28 A | 0% → 30% | 0d → 0.6d | baseline start none → 2013-03-28; baseline finish none → 2013-04-04 |
| 44 | Identify anomalies to specifications | 2013-04-04 A | 0% → 30% | 0d → 0.9d | baseline start none → 2013-04-04; baseline finish none → 2013-04-08 |
| 45 | Modify code | 2013-04-08 A | 0% → 30% | 0d → 0.6d | baseline start none → 2013-04-08; baseline finish none → 2013-04-11 |
| 46 | Re-test modified code | 2013-04-11 A | 0% → 30% | 0d → 0.3d | baseline start none → 2013-04-11; baseline finish none → 2013-04-15 |
| 47 | Integration testing complete | 2013-04-15 A | 0% → 30% | 0d → 0.3d | baseline start none → 2013-04-15; baseline finish none → 2013-04-15 |
| 48 | **Training** | 2013-02-06 A | 0% → 30% | 3d → 3.3d | baseline start none → 2013-02-06; baseline finish none → 2013-04-10 |
| 49 | Develop training specifications for end users | 2013-02-06 A | 0% → 30% | 21.75d → 23.25d | baseline start none → 2013-02-06; baseline finish none → 2013-02-08 |
| 50 | Develop training specifications for helpdesk support staff | 2013-02-06 A | 0% → 30% | 21.75d → 23.25d | baseline start none → 2013-02-06; baseline finish none → 2013-02-08 |
| 51 | Identify training delivery methodology (computer based training, classroom, etc.) | 2013-02-06 A | 0% → 30% | 22.75d → 24.25d | baseline start none → 2013-02-06; baseline finish none → 2013-02-07 |
| 52 | Develop training materials | 2013-03-07 A | 0% → 30% | 3d → 1.2d | baseline start none → 2013-03-07; baseline finish none → 2013-03-28 |
| 53 | Conduct training usability study | 2013-03-28 A | 0% → 30% | 3d → 0.9d | baseline start none → 2013-03-28; baseline finish none → 2013-04-03 |
| 54 | Finalize training materials | 2013-04-03 A | 0% → 30% | 3d → 0.6d | baseline start none → 2013-04-03; baseline finish none → 2013-04-08 |
| 55 | Develop training delivery mechanism | 2013-04-08 A | 0% → 30% | 3d → 3.3d | baseline start none → 2013-04-08; baseline finish none → 2013-04-10 |
| 56 | Training materials complete | 2013-04-10 A | 0% → 30% | 3d → 3.3d | baseline start none → 2013-04-10; baseline finish none → 2013-04-10 |
| 57 | **Documentation** | 2013-02-06 A | 0% → 30% | 18.25d → 18.55d | baseline start none → 2013-02-06; baseline finish none → 2013-03-20 |
| 58 | Develop Help specification | 2013-02-06 A | 0% → 30% | 27.75d → 14d | baseline start none → 2013-02-06; baseline finish none → 2013-02-06 |
| 59 | Develop Help system | 2013-02-20 A | 0% → 30% | 18.25d → 0.9d | baseline start none → 2013-02-20; baseline finish none → 2013-03-13 |
| 60 | Review Help documentation | 2013-03-13 A | 0% → 30% | 18.25d → 0.6d | baseline start none → 2013-03-13; baseline finish none → 2013-03-18 |
| 61 | Incorporate Help documentation feedback | 2013-03-18 A | 0% → 30% | 18.25d → 18.55d | baseline start none → 2013-03-18; baseline finish none → 2013-03-20 |
| 62 | Develop user manuals specifications | 2013-02-06 A | 0% → 30% | 27.75d → 13d | baseline start none → 2013-02-06; baseline finish none → 2013-02-07 |
| 63 | Develop user manuals | 2013-02-20 A | 0% → 30% | 19.25d → 0.6d | baseline start none → 2013-02-20; baseline finish none → 2013-03-13 |
| 64 | Review all user documentation | 2013-03-13 A | 0% → 30% | 19.25d → 0.6d | baseline start none → 2013-03-13; baseline finish none → 2013-03-15 |
| 65 | Incorporate user documentation feedback | 2013-03-15 A | 0% → 30% | 19.25d → 19.55d | baseline start none → 2013-03-15; baseline finish none → 2013-03-19 |
| 66 | Documentation complete | 2013-03-20 A | 0% → 30% | 18.25d → 18.55d | baseline start none → 2013-03-20; baseline finish none → 2013-03-20 |
| 67 | **Pilot** | 2013-01-16 A | 0% → 30% | 0d → 0.3d | baseline start none → 2013-01-16; baseline finish none → 2013-04-24 |
| 68 | Identify test group | 2013-01-16 A | 0% → 30% | 61.25d → 0.3d | baseline start none → 2013-01-16; baseline finish none → 2013-01-17 |
| 69 | Develop software delivery mechanism | 2013-01-17 A | 0% → 30% | 61.25d → 61.55d | baseline start none → 2013-01-17; baseline finish none → 2013-01-18 |
| 70 | Install/deploy software | 2013-04-15 A | 0% → 30% | 0d → 1.5d | baseline start none → 2013-04-15; baseline finish none → 2013-04-16 |

| ID | Task | Start | Complete | Total float | Other |
| --- | --- | --- | --- | --- | --- |
| 71 | Obtain user feedback | 2013-04-16 A | 0% → 30% | 0d → 0.3d | baseline start none → 2013-04-16; baseline finish none → 2013-04-23 |
| 72 | Evaluate testing information | 2013-04-23 A | 0% → 30% | 0d → 0.3d | baseline start none → 2013-04-23; baseline finish none → 2013-04-24 |
| 73 | Pilot complete | 2013-04-24 A | 0% → 30% | 0d → 0.3d | baseline start none → 2013-04-24; baseline finish none → 2013-04-24 |
| 74 | **Deployment** | 2013-04-24 A | 0% → 30% | 0d → 0.3d | baseline start none → 2013-04-24; baseline finish none → 2013-05-01 |
| 75 | Determine final deployment strategy | 2013-04-24 A | 0% → 30% | 0d → 0.3d | baseline start none → 2013-04-24; baseline finish none → 2013-04-25 |
| 76 | Develop deployment methodology | 2013-04-25 A | 0% → 30% | 0d → 0.3d | baseline start none → 2013-04-25; baseline finish none → 2013-04-26 |
| 77 | Secure deployment resources | 2013-04-26 A | 0% → 30% | 0d → 0.3d | baseline start none → 2013-04-26; baseline finish none → 2013-04-29 |
| 78 | Train support staff | 2013-04-29 A | 0% → 30% | 0d → 0.3d | baseline start none → 2013-04-29; baseline finish none → 2013-04-30 |
| 79 | Deploy software | 2013-04-30 A | 0% → 30% | 0d → 0.3d | baseline start none → 2013-04-30; baseline finish none → 2013-05-01 |
| 80 | Deployment complete | 2013-05-01 A | 0% → 30% | 0d → 0.3d | baseline start none → 2013-05-01; baseline finish none → 2013-05-01 |
| 81 | **Post Implementation Review** | 2013-05-01 A | 0% → 30% |  | baseline start none → 2013-05-01; baseline finish none → 2013-05-06 |
| 82 | Document lessons learned | 2013-05-01 A | 0% → 30% | 0d → 0.3d | baseline start none → 2013-05-01; baseline finish none → 2013-05-02 |
| 83 | Distribute to team members | 2013-05-02 A | 0% → 30% | 0d → 0.3d | baseline start none → 2013-05-02; baseline finish none → 2013-05-03 |
| 84 | Create software maintenance team | 2013-05-03 A | 0% → 30% |  | baseline start none → 2013-05-03; baseline finish none → 2013-05-06 |
| 85 | Post implementation review complete | 2013-05-06 A | 0% → 30% |  | baseline start none → 2013-05-06; baseline finish none → 2013-05-06 |
| 86 | Software development template complete | 2013-05-06 A | 0% → 30% |  | baseline start none → 2013-05-06; baseline finish none → 2013-05-06 |

## Version 3 (saved 2016-11-16, file Software Development Plan-1.mpp)

Note of the change: Added missing examples

Last finish 2013-05-06 → 2017-03-14 (+1408d).

Changed:

| ID | Task | Start | Finish | Complete | Total float | Other |
| --- | --- | --- | --- | --- | --- | --- |
| 1 | **Scope** | 2012-12-24 A → 2016-11-01 (+1408d) | 2012-12-27 → 2016-11-04 (+1408d) | 30% → 0% | 1.5d → none | baseline start 2012-12-24 → none; baseline finish 2012-12-27 → none |
| 2 | Determine project scope | 2012-12-24 A → 2016-11-01 (+1408d) | 2012-12-24 → 2016-11-01 (+1408d) | 30% → 0% | 0.3d → 0d | baseline start 2012-12-24 → none; baseline finish 2012-12-24 → none |
| 3 | Secure project sponsorship | 2012-12-24 A → 2016-11-01 (+1408d) | 2012-12-25 → 2016-11-02 (+1408d) | 30% → 0% | 0.3d → 0d | baseline start 2012-12-24 → none; baseline finish 2012-12-25 → none |
| 4 | Define preliminary resources | 2012-12-25 A → 2016-11-02 (+1408d) | 2012-12-26 → 2016-11-03 (+1408d) | 30% → 0% | 0.3d → 0d | baseline start 2012-12-25 → none; baseline finish 2012-12-26 → none |
| 5 | Secure core resources | 2012-12-26 A → 2016-11-03 (+1408d) | 2012-12-27 → 2016-11-04 (+1408d) | 30% → 0% | 1.5d → 0d | baseline start 2012-12-26 → none; baseline finish 2012-12-27 → none |
| 6 | Scope complete | 2012-12-27 A → 2016-11-04 (+1408d) | 2012-12-27 → 2016-11-04 (+1408d) | 30% → 0% | 1.5d → 0d | baseline start 2012-12-27 → none; baseline finish 2012-12-27 → none |
| 7 | **Analysis/Software Requirements** | 2012-12-27 A → 2016-11-04 (+1408d) | 2013-01-16 → 2016-11-24 (+1408d) | 30% → 0% | 0.3d → 0d | baseline start 2012-12-27 → none; baseline finish 2013-01-16 → none |
| 8 | Conduct needs analysis | 2012-12-27 A → 2016-11-04 (+1408d) | 2013-01-03 → 2016-11-11 (+1408d) | 30% → 0% | 0.9d → 0d | baseline start 2012-12-27 → none; baseline finish 2013-01-03 → none |
| 9 | Draft preliminary software specifications | 2013-01-03 A → 2016-11-11 (+1408d) | 2013-01-08 → 2016-11-16 (+1408d) | 30% → 0% | 0.6d → 0d | baseline start 2013-01-03 → none; baseline finish 2013-01-08 → none |
| 10 | Develop preliminary budget | 2013-01-08 A → 2016-11-16 (+1408d) | 2013-01-10 → 2016-11-18 (+1408d) | 30% → 0% | 0.15d → 0d | baseline start 2013-01-08 → none; baseline finish 2013-01-10 → none |
| 11 | Review software specifications/budget with team | 2013-01-10 A → 2016-11-18 (+1408d) | 2013-01-10 → 2016-11-18 (+1408d) | 30% → 0% | 0.3d → 0d | baseline start 2013-01-10 → none; baseline finish 2013-01-10 → none |
| 12 | Incorporate feedback on software specifications | 2013-01-11 A → 2016-11-21 (+1410d) | 2013-01-11 → 2016-11-21 (+1410d) | 30% → 0% | 0.3d → 0d | baseline start 2013-01-11 → none; baseline finish 2013-01-11 → none |
| 13 | Develop delivery timeline | 2013-01-14 A → 2016-11-22 (+1408d) | 2013-01-14 → 2016-11-22 (+1408d) | 30% → 0% | 0.15d → 0d | baseline start 2013-01-14 → none; baseline finish 2013-01-14 → none |
| 14 | Obtain approvals to proceed (concept, timeline, budget) | 2013-01-15 A → 2016-11-23 (+1408d) | 2013-01-15 → 2016-11-23 (+1408d) | 30% → 0% | 0.3d → 0d | baseline start 2013-01-15 → none; baseline finish 2013-01-15 → none |
| 15 | Secure required resources | 2013-01-15 A → 2016-11-23 (+1408d) | 2013-01-16 → 2016-11-24 (+1408d) | 30% → 0% | 0.3d → 0d | baseline start 2013-01-15 → none; baseline finish 2013-01-16 → none |
| 16 | Analysis complete | 2013-01-16 A → 2016-11-24 (+1408d) | 2013-01-16 → 2016-11-24 (+1408d) | 30% → 0% | 0.3d → 0d | baseline start 2013-01-16 → none; baseline finish 2013-01-16 → none |
| 17 | **Design** | 2013-01-16 A → 2016-11-24 (+1408d) | 2013-02-05 → 2016-12-14 (+1408d) | 30% → 0% | 0.3d → 0d | baseline start 2013-01-16 → none; baseline finish 2013-02-05 → none |
| 18 | Review preliminary software specifications | 2013-01-16 A → 2016-11-24 (+1408d) | 2013-01-18 → 2016-11-28 (+1410d) | 30% → 0% | 1.5d → 0d | baseline start 2013-01-16 → none; baseline finish 2013-01-18 → none |
| 19 | Develop functional specifications | 2013-01-18 A → 2016-11-28 (+1410d) | 2013-01-25 → 2016-12-05 (+1410d) | 30% → 0% | 1.2d → 0d | baseline start 2013-01-18 → none; baseline finish 2013-01-25 → none |
| 20 | Develop prototype based on functional specifications | 2013-01-25 A → 2016-12-05 (+1410d) | 2013-01-31 → 2016-12-09 (+1408d) | 30% → 0% | 0.6d → 0d | baseline start 2013-01-25 → none; baseline finish 2013-01-31 → none |
| 21 | Review functional specifications | 2013-01-31 A → 2016-12-09 (+1408d) | 2013-02-04 → 2016-12-13 (+1408d) | 30% → 0% | 0.3d → 0d | baseline start 2013-01-31 → none; baseline finish 2013-02-04 → none |
| 22 | Incorporate feedback into functional specifications | 2013-02-04 A → 2016-12-13 (+1408d) | 2013-02-05 → 2016-12-14 (+1408d) | 30% → 0% | 0.15d → 0d | baseline start 2013-02-04 → none; baseline finish 2013-02-05 → none |
| 23 | Obtain approval to proceed | 2013-02-05 A → 2016-12-14 (+1408d) | 2013-02-05 → 2016-12-14 (+1408d) | 30% → 0% | 0.3d → 0d | baseline start 2013-02-05 → none; baseline finish 2013-02-05 → none |
| 24 | Design complete | 2013-02-05 A → 2016-12-14 (+1408d) | 2013-02-05 → 2016-12-14 (+1408d) | 30% → 0% | 0.3d → 0d | baseline start 2013-02-05 → none; baseline finish 2013-02-05 → none |
| 25 | **Development** | 2013-02-06 A → 2016-12-15 (+1408d) | 2013-03-07 → 2017-01-13 (+1408d) | 30% → 0% | 1.5d → 0d | baseline start 2013-02-06 → none; baseline finish 2013-03-07 → none |
| 26 | Review functional specifications | 2013-02-06 A → 2016-12-15 (+1408d) | 2013-02-06 → 2016-12-15 (+1408d) | 30% → 0% | 0.3d → 0d | baseline start 2013-02-06 → none; baseline finish 2013-02-06 → none |
| 27 | Identify modular/tiered design parameters | 2013-02-07 A → 2016-12-16 (+1408d) | 2013-02-07 → 2016-12-16 (+1408d) | 30% → 0% | 0.3d → 0d | baseline start 2013-02-07 → none; baseline finish 2013-02-07 → none |
| 28 | Assign development staff | 2013-02-08 A → 2016-12-19 (+1410d) | 2013-02-08 → 2016-12-19 (+1410d) | 30% → 0% | 4.5d → 0d | baseline start 2013-02-08 → none; baseline finish 2013-02-08 → none |
| 29 | Develop code | 2013-02-11 A → 2016-12-20 (+1408d) | 2013-03-01 → 2017-01-09 (+1410d) | 30% → 0% | 4.5d → 0d | baseline start 2013-02-11 → none; baseline finish 2013-03-01 → none |
| 30 | Developer testing (primary debugging) | 2013-02-14 A → 2016-12-23 (+1408d) | 2013-03-07 → 2017-01-13 (+1408d) | 30% → 0% | 1.5d → 0d | baseline start 2013-02-14 → none; baseline finish 2013-03-07 → none |
| 31 | Development complete | 2013-03-07 A → 2017-01-13 (+1408d) | 2013-03-07 → 2017-01-13 (+1408d) | 30% → 0% | 1.5d → 0d | baseline start 2013-03-07 → none; baseline finish 2013-03-07 → none |
| 32 | **Testing** | 2013-02-06 A → 2016-12-15 (+1408d) | 2013-04-15 → 2017-02-21 (+1408d) | 30% → 0% |  | baseline start 2013-02-06 → none; baseline finish 2013-04-15 → none |
| 33 | Develop unit test plans using product specifications | 2013-02-06 A → 2016-12-15 (+1408d) | 2013-02-11 → 2016-12-20 (+1408d) | 30% → 0% | 19.25d → 17.75d | baseline start 2013-02-06 → none; baseline finish 2013-02-11 → none |
| 34 | Develop integration test plans using product specifications | 2013-02-06 A → 2016-12-15 (+1408d) | 2013-02-11 → 2016-12-20 (+1408d) | 30% → 0% |  | baseline start 2013-02-06 → none; baseline finish 2013-02-11 → none |
| 35 | **Unit Testing** | 2013-03-07 A → 2017-01-13 (+1408d) | 2013-03-28 → 2017-02-03 (+1408d) | 30% → 0% | 1.5d → 0d | baseline start 2013-03-07 → none; baseline finish 2013-03-28 → none |
| 36 | Review modular code | 2013-03-07 A → 2017-01-13 (+1408d) | 2013-03-14 → 2017-01-20 (+1408d) | 30% → 0% | 0.6d → 0d | baseline start 2013-03-07 → none; baseline finish 2013-03-14 → none |
| 37 | Test component modules to product specifications | 2013-03-14 A → 2017-01-20 (+1408d) | 2013-03-18 → 2017-01-24 (+1408d) | 30% → 0% | 0.9d → 0d | baseline start 2013-03-14 → none; baseline finish 2013-03-18 → none |
| 38 | Identify anomalies to product specifications | 2013-03-18 A → 2017-01-24 (+1408d) | 2013-03-21 → 2017-01-27 (+1408d) | 30% → 0% | 0.9d → 0d | baseline start 2013-03-18 → none; baseline finish 2013-03-21 → none |
| 39 | Modify code | 2013-03-21 A → 2017-01-27 (+1408d) | 2013-03-26 → 2017-02-01 (+1408d) | 30% → 0% | 0.6d → 0d | baseline start 2013-03-21 → none; baseline finish 2013-03-26 → none |
| 40 | Re-test modified code | 2013-03-26 A → 2017-02-01 (+1408d) | 2013-03-28 → 2017-02-03 (+1408d) | 30% → 0% | 1.5d → 0d | baseline start 2013-03-26 → none; baseline finish 2013-03-28 → none |
| 41 | Unit testing complete | 2013-03-28 A → 2017-02-03 (+1408d) | 2013-03-28 → 2017-02-03 (+1408d) | 30% → 0% | 1.5d → 0d | baseline start 2013-03-28 → none; baseline finish 2013-03-28 → none |
| 42 | **Integration Testing** | 2013-03-28 A → 2017-02-03 (+1408d) | 2013-04-15 → 2017-02-21 (+1408d) | 30% → 0% | 0.3d → 0d | baseline start 2013-03-28 → none; baseline finish 2013-04-15 → none |
| 43 | Test module integration | 2013-03-28 A → 2017-02-03 (+1408d) | 2013-04-04 → 2017-02-10 (+1408d) | 30% → 0% | 0.6d → 0d | baseline start 2013-03-28 → none; baseline finish 2013-04-04 → none |
| 44 | Identify anomalies to specifications | 2013-04-04 A → 2017-02-10 (+1408d) | 2013-04-08 → 2017-02-14 (+1408d) | 30% → 0% | 0.9d → 0d | baseline start 2013-04-04 → none; baseline finish 2013-04-08 → none |
| 45 | Modify code | 2013-04-08 A → 2017-02-14 (+1408d) | 2013-04-11 → 2017-02-17 (+1408d) | 30% → 0% | 0.6d → 0d | baseline start 2013-04-08 → none; baseline finish 2013-04-11 → none |
| 46 | Re-test modified code | 2013-04-11 A → 2017-02-17 (+1408d) | 2013-04-15 → 2017-02-21 (+1408d) | 30% → 0% | 0.3d → 0d | baseline start 2013-04-11 → none; baseline finish 2013-04-15 → none |
| 47 | Integration testing complete | 2013-04-15 A → 2017-02-21 (+1408d) | 2013-04-15 → 2017-02-21 (+1408d) | 30% → 0% | 0.3d → 0d | baseline start 2013-04-15 → none; baseline finish 2013-04-15 → none |
| 48 | **Training** | 2013-02-06 A → 2016-12-15 (+1408d) | 2013-04-10 → 2017-02-16 (+1408d) | 30% → 0% | 3.3d → 3d | baseline start 2013-02-06 → none; baseline finish 2013-04-10 → none |
| 49 | Develop training specifications for end users | 2013-02-06 A → 2016-12-15 (+1408d) | 2013-02-08 → 2016-12-19 (+1410d) | 30% → 0% | 23.25d → 21.75d | baseline start 2013-02-06 → none; baseline finish 2013-02-08 → none |
| 50 | Develop training specifications for helpdesk support staff | 2013-02-06 A → 2016-12-15 (+1408d) | 2013-02-08 → 2016-12-19 (+1410d) | 30% → 0% | 23.25d → 21.75d | baseline start 2013-02-06 → none; baseline finish 2013-02-08 → none |
| 51 | Identify training delivery methodology (computer based training, classroom, etc.) | 2013-02-06 A → 2016-12-15 (+1408d) | 2013-02-07 → 2016-12-16 (+1408d) | 30% → 0% | 24.25d → 22.75d | baseline start 2013-02-06 → none; baseline finish 2013-02-07 → none |
| 52 | Develop training materials | 2013-03-07 A → 2017-01-13 (+1408d) | 2013-03-28 → 2017-02-03 (+1408d) | 30% → 0% | 1.2d → 3d | baseline start 2013-03-07 → none; baseline finish 2013-03-28 → none |
| 53 | Conduct training usability study | 2013-03-28 A → 2017-02-03 (+1408d) | 2013-04-03 → 2017-02-09 (+1408d) | 30% → 0% | 0.9d → 3d | baseline start 2013-03-28 → none; baseline finish 2013-04-03 → none |
| 54 | Finalize training materials | 2013-04-03 A → 2017-02-09 (+1408d) | 2013-04-08 → 2017-02-14 (+1408d) | 30% → 0% | 0.6d → 3d | baseline start 2013-04-03 → none; baseline finish 2013-04-08 → none |
| 55 | Develop training delivery mechanism | 2013-04-08 A → 2017-02-14 (+1408d) | 2013-04-10 → 2017-02-16 (+1408d) | 30% → 0% | 3.3d → 3d | baseline start 2013-04-08 → none; baseline finish 2013-04-10 → none |
| 56 | Training materials complete | 2013-04-10 A → 2017-02-16 (+1408d) | 2013-04-10 → 2017-02-16 (+1408d) | 30% → 0% | 3.3d → 3d | baseline start 2013-04-10 → none; baseline finish 2013-04-10 → none |
| 57 | **Documentation** | 2013-02-06 A → 2016-12-15 (+1408d) | 2013-03-20 → 2017-01-26 (+1408d) | 30% → 0% | 18.55d → 18.25d | baseline start 2013-02-06 → none; baseline finish 2013-03-20 → none |
| 58 | Develop Help specification | 2013-02-06 A → 2016-12-15 (+1408d) | 2013-02-06 → 2016-12-15 (+1408d) | 30% → 0% | 14d → 27.75d | baseline start 2013-02-06 → none; baseline finish 2013-02-06 → none |
| 59 | Develop Help system | 2013-02-20 A → 2016-12-29 (+1408d) | 2013-03-13 → 2017-01-19 (+1408d) | 30% → 0% | 0.9d → 18.25d | baseline start 2013-02-20 → none; baseline finish 2013-03-13 → none |
| 60 | Review Help documentation | 2013-03-13 A → 2017-01-19 (+1408d) | 2013-03-18 → 2017-01-24 (+1408d) | 30% → 0% | 0.6d → 18.25d | baseline start 2013-03-13 → none; baseline finish 2013-03-18 → none |
| 61 | Incorporate Help documentation feedback | 2013-03-18 A → 2017-01-24 (+1408d) | 2013-03-20 → 2017-01-26 (+1408d) | 30% → 0% | 18.55d → 18.25d | baseline start 2013-03-18 → none; baseline finish 2013-03-20 → none |
| 62 | Develop user manuals specifications | 2013-02-06 A → 2016-12-15 (+1408d) | 2013-02-07 → 2016-12-16 (+1408d) | 30% → 0% | 13d → 27.75d | baseline start 2013-02-06 → none; baseline finish 2013-02-07 → none |
| 63 | Develop user manuals | 2013-02-20 A → 2016-12-29 (+1408d) | 2013-03-13 → 2017-01-19 (+1408d) | 30% → 0% | 0.6d → 19.25d | baseline start 2013-02-20 → none; baseline finish 2013-03-13 → none |
| 64 | Review all user documentation | 2013-03-13 A → 2017-01-19 (+1408d) | 2013-03-15 → 2017-01-23 (+1410d) | 30% → 0% | 0.6d → 19.25d | baseline start 2013-03-13 → none; baseline finish 2013-03-15 → none |
| 65 | Incorporate user documentation feedback | 2013-03-15 A → 2017-01-23 (+1410d) | 2013-03-19 → 2017-01-25 (+1408d) | 30% → 0% | 19.55d → 19.25d | baseline start 2013-03-15 → none; baseline finish 2013-03-19 → none |
| 66 | Documentation complete | 2013-03-20 A → 2017-01-26 (+1408d) | 2013-03-20 → 2017-01-26 (+1408d) | 30% → 0% | 18.55d → 18.25d | baseline start 2013-03-20 → none; baseline finish 2013-03-20 → none |
| 67 | **Pilot** | 2013-01-16 A → 2016-11-24 (+1408d) | 2013-04-24 → 2017-03-02 (+1408d) | 30% → 0% | 0.3d → 0d | baseline start 2013-01-16 → none; baseline finish 2013-04-24 → none |
| 68 | Identify test group | 2013-01-16 A → 2016-11-24 (+1408d) | 2013-01-17 → 2016-11-25 (+1408d) | 30% → 0% | 0.3d → 61.25d | baseline start 2013-01-16 → none; baseline finish 2013-01-17 → none |
| 69 | Develop software delivery mechanism | 2013-01-17 A → 2016-11-25 (+1408d) | 2013-01-18 → 2016-11-28 (+1410d) | 30% → 0% | 61.55d → 61.25d | baseline start 2013-01-17 → none; baseline finish 2013-01-18 → none |
| 70 | Install/deploy software | 2013-04-15 A → 2017-02-21 (+1408d) | 2013-04-16 → 2017-02-22 (+1408d) | 30% → 0% | 1.5d → 0d | baseline start 2013-04-15 → none; baseline finish 2013-04-16 → none |

| ID | Task | Start | Finish | Complete | Total float | Other |
| --- | --- | --- | --- | --- | --- | --- |
| 71 | Obtain user feedback | 2013-04-16 A → 2017-02-22 (+1408d) | 2013-04-23 → 2017-03-01 (+1408d) | 30% → 0% | 0.3d → 0d | baseline start 2013-04-16 → none; baseline finish 2013-04-23 → none |
| 72 | Evaluate testing information | 2013-04-23 A → 2017-03-01 (+1408d) | 2013-04-24 → 2017-03-02 (+1408d) | 30% → 0% | 0.3d → 0d | baseline start 2013-04-23 → none; baseline finish 2013-04-24 → none |
| 73 | Pilot complete | 2013-04-24 A → 2017-03-02 (+1408d) | 2013-04-24 → 2017-03-02 (+1408d) | 30% → 0% | 0.3d → 0d | baseline start 2013-04-24 → none; baseline finish 2013-04-24 → none |
| 74 | **Deployment** | 2013-04-24 A → 2017-03-02 (+1408d) | 2013-05-01 → 2017-03-09 (+1408d) | 30% → 0% | 0.3d → 0d | baseline start 2013-04-24 → none; baseline finish 2013-05-01 → none |
| 75 | Determine final deployment strategy | 2013-04-24 A → 2017-03-02 (+1408d) | 2013-04-25 → 2017-03-03 (+1408d) | 30% → 0% | 0.3d → 0d | baseline start 2013-04-24 → none; baseline finish 2013-04-25 → none |
| 76 | Develop deployment methodology | 2013-04-25 A → 2017-03-03 (+1408d) | 2013-04-26 → 2017-03-06 (+1410d) | 30% → 0% | 0.3d → 0d | baseline start 2013-04-25 → none; baseline finish 2013-04-26 → none |
| 77 | Secure deployment resources | 2013-04-26 A → 2017-03-06 (+1410d) | 2013-04-29 → 2017-03-07 (+1408d) | 30% → 0% | 0.3d → 0d | baseline start 2013-04-26 → none; baseline finish 2013-04-29 → none |
| 78 | Train support staff | 2013-04-29 A → 2017-03-07 (+1408d) | 2013-04-30 → 2017-03-08 (+1408d) | 30% → 0% | 0.3d → 0d | baseline start 2013-04-29 → none; baseline finish 2013-04-30 → none |
| 79 | Deploy software | 2013-04-30 A → 2017-03-08 (+1408d) | 2013-05-01 → 2017-03-09 (+1408d) | 30% → 0% | 0.3d → 0d | baseline start 2013-04-30 → none; baseline finish 2013-05-01 → none |
| 80 | Deployment complete | 2013-05-01 A → 2017-03-09 (+1408d) | 2013-05-01 → 2017-03-09 (+1408d) | 30% → 0% | 0.3d → 0d | baseline start 2013-05-01 → none; baseline finish 2013-05-01 → none |
| 81 | **Post Implementation Review** | 2013-05-01 A → 2017-03-09 (+1408d) | 2013-05-06 → 2017-03-14 (+1408d) | 30% → 0% |  | baseline start 2013-05-01 → none; baseline finish 2013-05-06 → none |
| 82 | Document lessons learned | 2013-05-01 A → 2017-03-09 (+1408d) | 2013-05-02 → 2017-03-10 (+1408d) | 30% → 0% | 0.3d → 0d | baseline start 2013-05-01 → none; baseline finish 2013-05-02 → none |
| 83 | Distribute to team members | 2013-05-02 A → 2017-03-10 (+1408d) | 2013-05-03 → 2017-03-13 (+1410d) | 30% → 0% | 0.3d → 0d | baseline start 2013-05-02 → none; baseline finish 2013-05-03 → none |
| 84 | Create software maintenance team | 2013-05-03 A → 2017-03-13 (+1410d) | 2013-05-06 → 2017-03-14 (+1408d) | 30% → 0% |  | baseline start 2013-05-03 → none; baseline finish 2013-05-06 → none |
| 85 | Post implementation review complete | 2013-05-06 A → 2017-03-14 (+1408d) | 2013-05-06 → 2017-03-14 (+1408d) | 30% → 0% |  | baseline start 2013-05-06 → none; baseline finish 2013-05-06 → none |
| 86 | Software development template complete | 2013-05-06 A → 2017-03-14 (+1408d) | 2013-05-06 → 2017-03-14 (+1408d) | 30% → 0% |  | baseline start 2013-05-06 → none; baseline finish 2013-05-06 → none |
